Schedule from MS Project, 2014-06-05 to 2014-08-13, status date 2014-06-03, 13 hours a day, costs in $, A marks actual dates.
SPecialiST RePack

## Calendars

- VisuScreen: Mon-Wed 08:00-21:00; Thu off; Fri-Sun 08:00-21:00.

## Resources

| Resource | Rate |
| --- | --- |
| Anton |  |
| Nikitin |  |
| Kholodovitch | 20 |
| Wedeko |  |
| Orchid |  |
| Orschit |  |

## Schedule

| ID | WBS | Task | Type | Duration | Start | Finish | Predecessors | Complete | Total slack | Constraint | Resources | Work | Cost |
| --- | --- | --- | --- | --- | --- | --- | --- | --- | --- | --- | --- | --- | --- |
| 1 | 1 | Discussion about work plan |  | 3d | 2014-06-10 | 2014-06-13 |  |  | 50.46d | start no earlier than 2014-06-10 | Orschit; Nikitin; Wedeko | 90h |  |
| 2 | 2 | Start of development | milestone | 0d | 2014-06-05 A | 2014-06-05 A |  | 100% |  |  |  |  |  |
| 3 | 3 | **Prototypes** |  | 30d | 2014-06-06 | 2014-07-09 | 2 |  | 0d |  |  | 312h | 6,240 |
| 4 | 3.1 | **HTML5 display prototypes** |  | 6d | 2014-06-06 | 2014-06-11 |  |  | 0d |  | Kholodovitch | 78h | 1,560 |
| 5 | 3.1.1 | **Prototype: application with included WebChromeClient** |  | 2d | 2014-06-06 | 2014-06-07 |  |  | 0d |  |  |  |  |
| 6 | 3.1.1.1 | research about all implementations |  | 0.5d | 2014-06-06 | 2014-06-06 |  |  | 0d |  |  |  |  |
| 7 | 3.1.1.2 | test different html5 renderers |  | 1d | 2014-06-06 | 2014-06-07 | 6 |  | 0d |  |  |  |  |
| 8 | 3.1.1.3 | check chromium renderer |  | 0.5d | 2014-06-07 | 2014-06-07 | 7 |  | 0d |  |  |  |  |
| 9 | 3.1.2 | **Prototype: implement all needed transitions** |  | 4d | 2014-06-08 | 2014-06-11 | 5 |  | 0d |  |  |  |  |
| 10 | 3.1.2.1 | research about implemented transition effects |  | 0.5d | 2014-06-08 | 2014-06-08 |  |  | 0d |  |  |  |  |
| 11 | 3.1.2.2 | implement mask fade effects |  | 1.5d | 2014-06-08 | 2014-06-09 | 10 |  | 0d |  |  |  |  |
| 12 | 3.1.2.3 | implement 3d transitions |  | 1d | 2014-06-10 | 2014-06-10 | 11 |  | 0d |  |  |  |  |
| 13 | 3.1.2.4 | implement object-animations |  | 0.5d | 2014-06-11 | 2014-06-11 | 12 |  | 0d |  |  |  |  |
| 14 | 3.1.2.5 | testing performance |  | 0.5d | 2014-06-11 | 2014-06-11 | 13 |  | 0d |  |  |  |  |
| 15 | 3.2 | Ready HTML5 display prototypes | milestone | 0d | 2014-06-11 | 2014-06-11 | 4 |  | 0d |  |  |  |  |
| 16 | 3.3 | **Schedule converting and processing prototype** |  | 6d | 2014-06-13 | 2014-06-18 | 15 |  | 0d |  |  |  |  |
| 17 | 3.3.1 | analyse logic of DevExpress schedule |  | 1d | 2014-06-13 | 2014-06-13 |  |  | 0d |  |  |  |  |
| 18 | 3.3.2 | create scheme of json schedule |  | 2d | 2014-06-14 | 2014-06-15 | 17 |  | 0d |  |  |  |  |
| 19 | 3.3.3 | try to process manually |  | 2d | 2014-06-16 | 2014-06-17 | 18 |  | 0d |  |  |  |  |
| 20 | 3.3.4 | test client for check implemented logic, testing |  | 1d | 2014-06-18 | 2014-06-18 | 19 |  | 0d |  |  |  |  |
| 21 | 3.4 | Ready schedule converting and processing prototype | milestone | 0d | 2014-06-18 | 2014-06-18 | 16 |  | 0d |  |  |  |  |
| 22 | 3.5 | **Transfeding and building presentations prototypes** |  | 12d | 2014-06-20 | 2014-07-02 | 21 |  | 0d |  | Kholodovitch | 156h | 3,120 |
| 23 | 3.5.1 | **Prototype: building html+js from json-presentations** |  | 4d | 2014-06-20 | 2014-06-23 |  |  | 0d |  |  |  |  |
| 24 | 3.5.1.1 | creating json description of presentation strcture |  | 1d | 2014-06-20 | 2014-06-20 |  |  | 0d |  |  |  |  |
| 25 | 3.5.1.2 | implement module logic of scene and transition (switching) |  | 1.5d | 2014-06-21 | 2014-06-22 | 24 |  | 0d |  |  |  |  |
| 26 | 3.5.1.3 | generating html5 code by json |  | 1d | 2014-06-22 | 2014-06-23 | 25 |  | 0d |  |  |  |  |
| 27 | 3.5.1.4 | testing |  | 0.5d | 2014-06-23 | 2014-06-23 | 26 |  | 0d |  |  |  |  |

| ID | WBS | Task | Type | Duration | Start | Finish | Predecessors | Total slack | Resources | Work | Cost |
| --- | --- | --- | --- | --- | --- | --- | --- | --- | --- | --- | --- |
| 28 | 3.5.2 | **Prototype: json-server** |  | 4d | 2014-06-24 | 2014-06-28 | 23 | 0d |  |  |  |
| 29 | 3.5.2.1 | research and experiments with exists implementations JSON-services on C# |  | 1.5d | 2014-06-24 | 2014-06-25 |  | 0d |  |  |  |
| 30 | 3.5.2.2 | implement test service API |  | 0.5d | 2014-06-25 | 2014-06-25 | 29 | 0d |  |  |  |
| 31 | 3.5.2.3 | implement test logic for transter data to client |  | 1d | 2014-06-27 | 2014-06-27 | 30 | 0d |  |  |  |
| 32 | 3.5.2.4 | testing work with client |  | 1d | 2014-06-28 | 2014-06-28 | 31 | 0d |  |  |  |
| 33 | 3.5.3 | **Prototype: async calling network work with sesrver** |  | 4d | 2014-06-29 | 2014-07-02 | 28 | 0d |  |  |  |
| 34 | 3.5.3.1 | research of all async call implementations |  | 1d | 2014-06-29 | 2014-06-29 |  | 0d |  |  |  |
| 35 | 3.5.3.2 | implement separated threads for different tasks with forse call |  | 2d | 2014-06-30 | 2014-07-01 | 34 | 0d |  |  |  |
| 36 | 3.5.3.3 | test client of work with simply json-server |  | 1d | 2014-07-02 | 2014-07-02 | 35 | 0d |  |  |  |
| 37 | 3.6 | Ready transfeding and building presentations prototypes | milestone | 0d | 2014-07-02 | 2014-07-02 | 22 | 0d |  |  |  |
| 38 | 3.7 | **Local managment content prototypes** |  | 6d | 2014-07-04 | 2014-07-09 | 37 | 0d | Kholodovitch | 78h | 1,560 |
| 39 | 3.7.1 | **Prototype: work with local storage** |  | 2d | 2014-07-04 | 2014-07-05 |  | 0d |  |  |  |
| 40 | 3.7.1.1 | research about file and SQL requests to file storage |  | 1d | 2014-07-04 | 2014-07-04 |  | 0d |  |  |  |
| 41 | 3.7.1.2 | implament saving huge files, preformance tests |  | 1d | 2014-07-05 | 2014-07-05 | 40 | 0d |  |  |  |
| 42 | 3.7.2 | **Prototype: unloading unneded scenes (optimize reosurces)** |  | 3d | 2014-07-06 | 2014-07-08 | 39 | 0d |  |  |  |
| 43 | 3.7.2.1 | research about max allowed content loading on page |  | 1d | 2014-07-06 | 2014-07-06 |  | 0d |  |  |  |
| 44 | 3.7.2.2 | prototypes and implementations for loading and unloading content |  | 1.5d | 2014-07-07 | 2014-07-08 | 43 | 0d |  |  |  |
| 45 | 3.7.2.3 | util for determinate memory usage, testing |  | 0.5d | 2014-07-08 | 2014-07-08 | 44 | 0d |  |  |  |
| 46 | 3.7.3 | **Prototype: screenshoting** |  | 1d | 2014-07-09 | 2014-07-09 | 42 | 0d |  |  |  |
| 47 | 3.7.3.1 | research and experiments |  | 0.75d | 2014-07-09 | 2014-07-09 |  | 0d |  |  |  |
| 48 | 3.7.3.2 | testing performance |  | 0.25d | 2014-07-09 | 2014-07-09 | 47 | 0d |  |  |  |
| 49 | 4 | Ready all prototypes | milestone | 0d | 2014-07-09 | 2014-07-09 | 3 | 0d |  |  |  |
| 50 | 5 | **Pre-alpha version** |  | 12d | 2014-07-11 | 2014-07-23 | 49 | 0d | Kholodovitch | 156h | 3,120 |
| 51 | 5.1 | Implement converting XAML-presentations to primitive format |  | 8d | 2014-07-11 | 2014-07-19 |  | 0d |  |  |  |
| 52 | 5.2 | Offline player alpha without animations |  | 4d | 2014-07-20 | 2014-07-23 | 51 | 0d |  |  |  |
| 53 | 6 | Ready pre-alpha version | milestone | 0d | 2014-07-23 | 2014-07-23 | 50 | 0d |  |  |  |

| ID | WBS | Task | Type | Duration | Start | Finish | Predecessors | Total slack | Resources | Work | Cost |
| --- | --- | --- | --- | --- | --- | --- | --- | --- | --- | --- | --- |
| 54 | 7 | **Alpha version** |  | 6d | 2014-07-25 | 2014-07-30 | 53 | 0d | Kholodovitch | 78h | 1,560 |
| 55 | 7.1 | Implement HTTP-JSON player-server connetction, transfering content |  | 3d | 2014-07-25 | 2014-07-27 |  | 0d |  |  |  |
| 56 | 7.2 | Saving content to local storage |  | 1.5d | 2014-07-28 | 2014-07-29 | 55 | 0d |  |  |  |
| 57 | 7.3 | Check transferring huge video, managment of downloaded content |  | 1.5d | 2014-07-29 | 2014-07-30 | 56 | 0d |  |  |  |
| 58 | 8 | Ready alpha version | milestone | 0d | 2014-07-30 | 2014-07-30 | 54 | 0d |  |  |  |
| 59 | 9 | **Developing beta-version** |  | 6d | 2014-08-01 | 2014-08-06 | 58 | 0d | Kholodovitch | 117h | 1,560 |
| 60 | 9.1 | Transfering information about type of player |  | 1d | 2014-08-01 | 2014-08-01 |  | 0d |  |  |  |
| 61 | 9.2 | Change client's GUI for prevent transferring unsupported content |  | 2d | 2014-08-02 | 2014-08-03 | 60 | 0d |  |  |  |
| 62 | 9.3 | Other small logic and bug-fixing |  | 3d | 2014-08-04 | 2014-08-06 | 61 | 0d |  |  |  |
| 63 | 9.4 | Testing and creating bug-reports |  | 3d | 2014-08-04 | 2014-08-06 | 61 | 0d | Wedeko | 39h |  |
| 64 | 10 | Ready beta version | milestone | 0d | 2014-08-06 | 2014-08-06 | 59 | 0d |  |  |  |
| 65 | 11 | **Release version** |  | 6d | 2014-08-08 | 2014-08-13 | 64 | 0d | Kholodovitch | 130h | 1,560 |
| 66 | 11.1 | Testing and bug-fixing |  | 6d | 2014-08-08 | 2014-08-13 |  | 0d |  |  |  |
| 67 | 11.2 | Testing and creating bug-reports |  | 4d | 2014-08-08 | 2014-08-11 |  | 2d | Wedeko | 52h |  |
| 68 | 12 | Ready release version | milestone | 0d | 2014-08-13 | 2014-08-13 | 65 | 0d |  |  |  |
